Schedule from MS Project, 2014-09-10 to 2014-11-11.

## Calendars

- 标准: Mon-Sun 08:00-12:00, 13:00-17:00. Exceptions (off unless hours are given): 2014-09-20 to 2014-09-21 08:00-12:00, 13:00-17:00.

## Resources

| Resource |
| --- |
| 周攀 |

## Schedule

| ID | WBS | Task | Duration | Start | Finish | Predecessors | Total slack | Free slack | Constraint |
| --- | --- | --- | --- | --- | --- | --- | --- | --- | --- |
| 1 | 1 | **十一版本** | 63d? | 2014-09-10 | 2014-11-11 |  | 0d |  |  |
| 2 | 1.1 | **设计** | 12d? | 2014-09-10 | 2014-09-21 |  | 54d |  |  |
| 3 | 1.1.1 | 首页 | 1d? | 2014-09-10 | 2014-09-10 |  | 21d | 0d | start no earlier than 2014-09-10 |
| 4 | 1.1.2 | 注册页面，登录 | 1d? | 2014-09-11 | 2014-09-11 | 3 | 21d | 0d |  |
| 5 | 1.1.3 | 用户信息编辑 | 1d? | 2014-09-12 | 2014-09-12 | 4 | 21d | 0d |  |
| 6 | 1.1.4 | 找回密码 | 1d? | 2014-09-13 | 2014-09-13 | 5 | 33d | 0d |  |
| 7 | 1.1.5 | 手机验证 | 1d? | 2014-09-14 | 2014-09-14 | 6 | 33d | 0d |  |
| 8 | 1.1.6 | **景点介绍** | 2d? | 2014-09-15 | 2014-09-16 | 7 | 54d |  |  |
| 9 | 1.1.6.1 | 主页 | 1d? | 2014-09-15 | 2014-09-15 | 7 | 33d | 0d |  |
| 10 | 1.1.6.2 | 详细页 | 1d? | 2014-09-16 | 2014-09-16 | 9 | 33d | 0d |  |
| 11 | 1.1.7 | **门票预订** | 2d? | 2014-09-17 | 2014-09-18 | 10 | 54d |  |  |
| 12 | 1.1.7.1 | 主页 | 1d? | 2014-09-17 | 2014-09-17 | 10 | 33d | 0d |  |
| 13 | 1.1.7.2 | 详细 | 1d? | 2014-09-18 | 2014-09-18 | 12 | 33d | 0d |  |
| 14 | 1.1.8 | **酒店预订** | 3d? | 2014-09-19 | 2014-09-21 |  | 54d |  |  |
| 15 | 1.1.8.1 | 列表1 | 1d? | 2014-09-19 | 2014-09-19 | 13 | 33d | 0d |  |
| 16 | 1.1.8.2 | 列表2 | 1d? | 2014-09-20 | 2014-09-20 | 15 | 33d | 0d |  |
| 17 | 1.1.8.3 | 详细 | 1d? | 2014-09-21 | 2014-09-21 | 16 | 33d |  |  |
| 18 | 1.2 | **开发** | 63d? | 2014-09-10 | 2014-11-11 |  | 0d |  |  |
| 19 | 1.2.1 | **首页功能开发** | 3d? | 2014-09-15 | 2014-09-17 |  | 58d |  |  |
| 20 | 1.2.1.1 | 统一头部、底部抽取 | 1d? | 2014-09-15 | 2014-09-15 |  | 27d | 0d | start no earlier than 2014-09-15 |
| 21 | 1.2.1.2 | 图片延迟加载功能 | 1d? | 2014-09-16 | 2014-09-16 | 20 | 27d | 0d |  |
| 22 | 1.2.1.3 | 页面动态数据嵌套 | 1d? | 2014-09-17 | 2014-09-17 | 21 | 27d |  |  |
| 23 | 1.2.2 | **用户** | 21d? | 2014-09-10 | 2014-09-30 |  | 45d |  |  |
| 24 | 1.2.2.1 | **注册** | 5d? | 2014-09-10 | 2014-09-14 |  | 45d |  |  |
| 25 | 1.2.2.1.1 | 用户表结构设计 | 1d? | 2014-09-10 | 2014-09-10 |  | 33d | 0d | start no earlier than 2014-09-10 |
| 26 | 1.2.2.1.2 | 图片验证码 | 1d? | 2014-09-11 | 2014-09-11 | 25 | 33d | 0d |  |
| 27 | 1.2.2.1.3 | 昵称、邮箱、密码、确认密码 | 1d? | 2014-09-12 | 2014-09-12 | 26 | 33d | 0d |  |
| 28 | 1.2.2.1.4 | 注册成功，自动发送邮箱 | 1d? | 2014-09-13 | 2014-09-13 | 27 | 33d | 0d |  |
| 29 | 1.2.2.1.5 | 注册页面嵌套 | 1d? | 2014-09-14 | 2014-09-14 | 28 | 33d | 0d |  |

| ID | WBS | Task | Duration | Start | Finish | Predecessors | Total slack | Free slack | Constraint |
| --- | --- | --- | --- | --- | --- | --- | --- | --- | --- |
| 30 | 1.2.2.2 | **找回密码** | 4d? | 2014-09-15 | 2014-09-18 | 28 | 45d |  |  |
| 31 | 1.2.2.2.1 | 邮箱找回 | 1d? | 2014-09-15 | 2014-09-15 | 29 | 33d | 0d |  |
| 32 | 1.2.2.2.2 | 手机找回 | 1d? | 2014-09-16 | 2014-09-16 | 31 | 33d | 0d |  |
| 33 | 1.2.2.2.3 | 密码重置 | 1d? | 2014-09-17 | 2014-09-17 | 32 | 33d | 0d |  |
| 34 | 1.2.2.2.4 | 找回密码页面嵌套 | 1d? | 2014-09-18 | 2014-09-18 | 33 | 33d | 0d |  |
| 35 | 1.2.2.3 | **登录** | 5d? | 2014-09-19 | 2014-09-23 | 33 | 45d |  |  |
| 36 | 1.2.2.3.1 | 手机号/邮箱、密码登录 | 1d? | 2014-09-19 | 2014-09-19 | 34 | 33d | 0d |  |
| 37 | 1.2.2.3.2 | 登录成功后，跳转页（统一登录） | 1d? | 2014-09-20 | 2014-09-20 | 36 | 33d | 0d |  |
| 38 | 1.2.2.3.3 | 登录弹出层 | 1d? | 2014-09-21 | 2014-09-21 | 37 | 33d | 0d |  |
| 39 | 1.2.2.3.4 | 登录页面嵌套 | 1d? | 2014-09-22 | 2014-09-22 | 38 | 33d | 0d |  |
| 40 | 1.2.2.3.5 | 统一登录跨域功能实现 | 1d? | 2014-09-23 | 2014-09-23 | 39 | 33d | 0d |  |
| 41 | 1.2.2.4 | **用户中心** | 7d? | 2014-09-24 | 2014-09-30 | 38 | 45d |  |  |
| 42 | 1.2.2.4.1 | 用户信息编辑 | 1d? | 2014-09-24 | 2014-09-24 | 40 | 24d | 0d |  |
| 43 | 1.2.2.4.2 | 我的成交 | 1d? | 2014-09-25 | 2014-09-25 | 42 | 24d | 0d |  |
| 44 | 1.2.2.4.3 | 我的订单 | 1d? | 2014-09-26 | 2014-09-26 | 43 | 24d | 0d |  |
| 45 | 1.2.2.4.4 | 我的收藏 | 1d? | 2014-09-27 | 2014-09-27 | 44 | 24d | 0d |  |
| 46 | 1.2.2.4.5 | 我的购物车 | 1d? | 2014-09-28 | 2014-09-28 | 45 | 24d | 0d |  |
| 47 | 1.2.2.4.6 | 手机号码验证 | 1d? | 2014-09-29 | 2014-09-29 | 46 | 24d | 0d |  |
| 48 | 1.2.2.4.7 | 统一拦截器（鉴权） | 1d? | 2014-09-30 | 2014-09-30 | 47 | 24d |  |  |
| 49 | 1.2.3 | **景点门票** | 53d? | 2014-09-20 | 2014-11-11 |  | 0d |  |  |
| 50 | 1.2.3.1 | **后端** | 29d | 2014-09-20 | 2014-10-18 |  | 0d |  |  |
| 51 | 1.2.3.1.1 | 景点、门票库表设计 | 2d | 2014-09-20 | 2014-09-21 |  | 0d |  | finish no earlier than 2014-09-21 |
| 52 | 1.2.3.1.2 | **景点管理功能实现** | 6d | 2014-09-22 | 2014-09-27 | 51 | 0d |  |  |
| 53 | 1.2.3.1.2.1 | 列表、查询、删除 | 2d | 2014-09-22 | 2014-09-23 |  | 0d |  |  |
| 54 | 1.2.3.1.2.2 | 新增 | 2d | 2014-09-24 | 2014-09-25 | 53 | 0d |  |  |
| 55 | 1.2.3.1.2.3 | 修改 | 1d | 2014-09-26 | 2014-09-26 | 54 | 0d |  |  |
| 56 | 1.2.3.1.2.4 | 详情页 | 1d | 2014-09-27 | 2014-09-27 | 55 | 0d |  |  |

| ID | WBS | Task | Duration | Start | Finish | Predecessors | Total slack | Free slack |
| --- | --- | --- | --- | --- | --- | --- | --- | --- |
| 57 | 1.2.3.1.3 | **门票管理功能实现** | 6d | 2014-09-28 | 2014-10-03 | 52 | 0d |  |
| 58 | 1.2.3.1.3.1 | 列表、查询、删除 | 2d | 2014-09-28 | 2014-09-29 |  | 0d |  |
| 59 | 1.2.3.1.3.2 | 新增 | 2d | 2014-09-30 | 2014-10-01 | 58 | 0d |  |
| 60 | 1.2.3.1.3.3 | 修改 | 1d | 2014-10-02 | 2014-10-02 | 59 | 0d |  |
| 61 | 1.2.3.1.3.4 | 详情页 | 1d | 2014-10-03 | 2014-10-03 | 60 | 0d |  |
| 62 | 1.2.3.1.4 | **票种管理功能实现** | 3d | 2014-10-04 | 2014-10-06 | 57 | 0d |  |
| 63 | 1.2.3.1.4.1 | 查询、删除 | 1d | 2014-10-04 | 2014-10-04 |  | 0d |  |
| 64 | 1.2.3.1.4.2 | 新增、修改 | 2d | 2014-10-05 | 2014-10-06 | 63 | 0d |  |
| 65 | 1.2.3.1.5 | 票种日期价格设置 | 3d | 2014-10-07 | 2014-10-09 | 62 | 0d |  |
| 66 | 1.2.3.1.6 | 景点相册模块管理 | 3d | 2014-10-10 | 2014-10-12 | 65 | 0d |  |
| 67 | 1.2.3.1.7 | **旅行线路【自由行、跟团游】** | 6d | 2014-10-13 | 2014-10-18 | 66 | 0d |  |
| 68 | 1.2.3.1.7.1 | 列表、查询、删除 | 2d | 2014-10-13 | 2014-10-14 |  | 0d |  |
| 69 | 1.2.3.1.7.2 | 新增 | 2d | 2014-10-15 | 2014-10-16 | 68 | 0d |  |
| 70 | 1.2.3.1.7.3 | 修改 | 1d | 2014-10-17 | 2014-10-17 | 69 | 0d |  |
| 71 | 1.2.3.1.7.4 | 详情页 | 1d | 2014-10-18 | 2014-10-18 | 70 | 0d |  |
| 72 | 1.2.3.2 | **前端** | 7d | 2014-10-19 | 2014-10-25 | 67 | 0d |  |
| 73 | 1.2.3.2.1 | 景点门票首页开发 | 2d | 2014-10-19 | 2014-10-20 |  | 0d |  |
| 74 | 1.2.3.2.2 | 景点详细页开发 | 2d | 2014-10-21 | 2014-10-22 | 73 | 0d |  |
| 75 | 1.2.3.2.3 | 线路详细页开发 | 3d | 2014-10-23 | 2014-10-25 | 74 | 0d |  |
| 76 | 1.2.3.3 | **酒店** | 8d? | 2014-10-23 | 2014-10-30 |  | 12d |  |
| 77 | 1.2.3.3.1 | **后端** | 5d? | 2014-10-23 | 2014-10-27 |  | 12d |  |
| 78 | 1.2.3.3.1.1 | 酒店、房间库表设计 | 2d | 2014-10-23 | 2014-10-24 | 74 | 12d | 0d |
| 79 | 1.2.3.3.1.2 | 酒店相册管理 | 1d? | 2014-10-25 | 2014-10-25 | 78 | 12d | 0d |
| 80 | 1.2.3.3.1.3 | 酒店地图功能 | 1d | 2014-10-26 | 2014-10-26 | 79 | 12d | 0d |
| 81 | 1.2.3.3.1.4 | 房型管理 | 1d | 2014-10-27 | 2014-10-27 | 80 | 12d | 0d |

| ID | WBS | Task | Duration | Start | Finish | Predecessors | Total slack | Free slack | Constraint |
| --- | --- | --- | --- | --- | --- | --- | --- | --- | --- |
| 82 | 1.2.3.3.2 | **前端** | 3d? | 2014-10-28 | 2014-10-30 | 81 | 12d |  |  |
| 83 | 1.2.3.3.2.1 | 酒店首页开发 | 2d | 2014-10-28 | 2014-10-29 | 81 | 12d | 0d |  |
| 84 | 1.2.3.3.2.2 | 酒店详细页开发 | 1d? | 2014-10-30 | 2014-10-30 | 83 | 12d |  |  |
| 85 | 1.2.3.4 | **订单** | 17d | 2014-10-26 | 2014-11-11 | 72 | 0d |  |  |
| 86 | 1.2.3.4.1 | 订单库表设计 | 2d | 2014-10-26 | 2014-10-27 |  | 0d |  |  |
| 87 | 1.2.3.4.2 | 验证码生成规则设计 | 1d | 2014-10-28 | 2014-10-28 | 86 | 0d |  |  |
| 88 | 1.2.3.4.3 | 门票下单页面开发 | 3d | 2014-10-29 | 2014-10-31 | 87 | 0d |  |  |
| 89 | 1.2.3.4.4 | 线路下单页面开发 | 2d | 2014-11-01 | 2014-11-02 | 88 | 0d |  |  |
| 90 | 1.2.3.4.5 | 支付页面开发 | 1d | 2014-11-03 | 2014-11-03 | 89 | 0d |  |  |
| 91 | 1.2.3.4.6 | 验证码生成功能开发 | 2d | 2014-11-04 | 2014-11-05 | 90 | 0d |  |  |
| 92 | 1.2.3.4.7 | 银联接口联调 | 1d | 2014-11-06 | 2014-11-06 | 91 | 0d |  |  |
| 93 | 1.2.3.4.8 | 后台订单管理 | 5d | 2014-11-07 | 2014-11-11 | 92 | 0d |  |  |
| 94 | 1.3 | **事务** | 9d? | 2014-09-10 | 2014-09-18 |  | 59d |  |  |
| 95 | 1.3.1 | 邮箱服务器接口 | 1d? | 2014-09-10 | 2014-09-10 |  | 59d | 0d | start no earlier than 2014-09-10 |
| 96 | 1.3.2 | 短信接口 | 1d? | 2014-09-11 | 2014-09-11 | 95 | 59d | 0d |  |
| 97 | 1.3.3 | QQ接口 | 1d? | 2014-09-12 | 2014-09-12 | 96 | 59d | 0d |  |
| 98 | 1.3.4 | 数据库服务器搭建 | 1d? | 2014-09-13 | 2014-09-13 | 97 | 59d | 0d |  |
| 99 | 1.3.5 | 应用服务器搭建 | 1d? | 2014-09-14 | 2014-09-14 | 98 | 59d | 0d |  |
| 100 | 1.3.6 | 图片服务器搭建 | 1d? | 2014-09-15 | 2014-09-15 | 99 | 59d | 0d |  |
| 101 | 1.3.7 | 开发平台搭建 | 1d? | 2014-09-16 | 2014-09-16 | 100 | 59d | 0d |  |
| 102 | 1.3.8 | 服务器备案 | 1d? | 2014-09-17 | 2014-09-17 | 101 | 59d | 0d |  |
| 103 | 1.3.9 | 百度统计申请 | 1d? | 2014-09-18 | 2014-09-18 | 102 | 59d |  |  |
